# Team10_项目计划的制订

Schedule from MS Project, 2010-09-20 to 2011-02-18.
digitas

## Calendars

- 宠物医院网站项目日历: Mon-Fri 08:00-12:00, 13:00-17:00; Sat-Sun off. Exceptions (off unless hours are given): 2010-10-01, 2010-10-04 to 2010-10-07, 2010-11-14.

## Resources

| Resource |
| --- |
| 江凌俊 |
| 苏岩 |
| 郭学兵 |
| 华天 |
| 龚迥 |

## Schedule

| ID | WBS | Task | Duration | Start | Finish | Predecessors | Total slack | Free slack | Constraint | Resources | Work |
| --- | --- | --- | --- | --- | --- | --- | --- | --- | --- | --- | --- |
| 1 | 1 | **初始阶段(1个迭代)** | 25d | 2010-09-20 | 2010-10-29 |  | 56d |  |  |  | 704h |
| 2 | 1.1 | 确定项目干系人和系统参与者 | 1d | 2010-09-20 | 2010-09-20 |  | 56d | 0d | finish no earlier than 2010-09-20 | 江凌俊; 龚迥 | 16h |
| 3 | 1.2 | 编写《Vision》文档 | 2d | 2010-09-21 | 2010-09-22 | 2 | 56d | 0.12d | finish no earlier than 2010-09-22 | 江凌俊 | 16h |
| 4 | 1.3 | 需求获取和分析 | 5d | 2010-09-23 | 2010-09-30 | 3 | 55.88d | 0.88d | start no earlier than 2010-09-23 | 江凌俊; 苏岩; 郭学兵; 华天; 龚迥 | 200h |
| 5 | 1.4 | **编写《需求规格说明书》** | 7d | 2010-10-08 | 2010-10-18 |  | 55d | 0d |  |  | 232h |
| 6 | 1.4.1 | 用例建模 | 2d | 2010-10-08 | 2010-10-11 | 4 | 55d | 0d | finish no earlier than 2010-10-11 | 江凌俊; 龚迥 | 32h |
| 7 | 1.4.2 | 编写用例规约 | 5d | 2010-10-12 | 2010-10-18 | 6 | 55d |  | finish no earlier than 2010-10-15 | 江凌俊; 苏岩; 郭学兵; 华天; 龚迥 | 200h |
| 8 | 1.5 | 实现用户界面原型 | 5d | 2010-10-19 | 2010-10-25 | 5 | 80d | 0d | start no earlier than 2010-10-18 | 华天; 郭学兵 | 80h |
| 9 | 1.6 | **评审《需求规格说明书》和界面原型** | 4d | 2010-10-26 | 2010-10-29 |  | 80d |  |  |  | 160h |
| 10 | 1.6.1 | 评审《需求规格说明书》 | 2d | 2010-10-26 | 2010-10-27 | 5 | 80d | 0d | finish no earlier than 2010-10-27 | 江凌俊 [50%]; 苏岩 [50%]; 郭学兵 [50%]; 华天 [50%]; 龚迥 [50%] | 40h |
| 11 | 1.6.2 | 评审界面原型 | 2d | 2010-10-26 | 2010-10-27 | 8 | 80d | 0d | finish no earlier than 2010-10-27 | 江凌俊 [50%]; 苏岩 [50%]; 郭学兵 [50%]; 华天 [50%]; 龚迥 [50%] | 40h |
| 12 | 1.6.3 | 更新《需求规格说明书》和界面原型 | 2d | 2010-10-28 | 2010-10-29 | 10, 11 | 80d |  | finish no earlier than 2010-10-29 | 江凌俊; 苏岩; 郭学兵; 华天; 龚迥 | 80h |
| 13 | 2 | **细化阶段(1个迭代)** | 21d | 2010-11-01 | 2010-11-30 |  | 45.88d | 0.88d |  |  | 504h |
| 14 | 2.1 | 架构分析 | 5d | 2010-11-01 | 2010-11-08 | 5 | 45.88d | 0d | start no earlier than 2010-11-01 | 江凌俊; 郭学兵; 华天 | 120h |
| 15 | 2.2 | 架构设计 | 5d | 2010-11-08 | 2010-11-15 | 14 | 45.88d | 0d | finish no earlier than 2010-11-12 | 江凌俊; 郭学兵; 华天 | 120h |
| 16 | 2.3 | 架构编码 | 5d | 2010-11-15 | 2010-11-22 | 15 | 45.88d | 0d | finish no earlier than 2010-11-19 | 江凌俊; 郭学兵; 华天 | 120h |
| 17 | 2.4 | 架构测试 | 6d | 2010-11-22 | 2010-11-30 | 16 | 45.88d |  | start no earlier than 2010-11-22 | 江凌俊; 苏岩; 龚迥 | 144h |
| 18 | 3 | **构造阶段(3个迭代)** | 37d | 2010-12-01 | 2011-01-20 |  | 21d |  |  |  | 800h |
| 19 | 3.1 | **构造阶段1(R1)** | 11d | 2010-12-01 | 2010-12-15 |  | 46d |  |  |  | 232h |
| 20 | 3.1.1 | 需求分析, 重点在医院管理和医生管理子系统 | 3d | 2010-12-01 | 2010-12-03 | 13 | 47d | 0d | finish no earlier than 2010-12-03 | 江凌俊; 苏岩; 龚迥 | 72h |
| 21 | 3.1.2 | 设计 | 2d | 2010-12-06 | 2010-12-07 | 20 | 47d | 0.12d | finish no earlier than 2010-12-07 | 郭学兵; 华天; 江凌俊 | 48h |
| 22 | 3.1.3 | 实现 | 5d | 2010-12-08 | 2010-12-15 | 21 | 46.88d | 1.88d | start no earlier than 2010-12-08 | 郭学兵; 华天 | 80h |
| 23 | 3.1.4 | 测试（用户共同参与） | 2d | 2010-12-14 | 2010-12-15 | 22SS+2d | 45d | 0d | finish no earlier than 2010-12-15 | 苏岩; 龚迥 | 32h |
| 24 | 3.2 | **构造阶段2(R2)** | 15d | 2010-12-16 | 2011-01-05 |  | 32d |  |  |  | 312h |
| 25 | 3.2.1 | 修改R1测试时发现的Bug | 2d | 2010-12-16 | 2010-12-17 | 23 | 45d |  | finish no earlier than 2010-12-17 | 郭学兵; 华天 | 32h |
| 26 | 3.2.2 | 需求分析，重点在在线问诊子系统 | 3d | 2010-12-20 | 2010-12-22 | 13 | 32d | 0d | finish no earlier than 2010-12-22 | 江凌俊; 苏岩; 龚迥 | 72h |
| 27 | 3.2.3 | 设计 | 2d | 2010-12-23 | 2010-12-24 | 26 | 32d | 0d | finish no earlier than 2010-12-24 | 郭学兵; 华天; 江凌俊 | 48h |
| 28 | 3.2.4 | 实现 | 8d | 2010-12-27 | 2011-01-05 | 27 | 32d | 4d | finish no earlier than 2011-01-05 | 郭学兵; 华天 | 128h |
| 29 | 3.2.5 | 测试（用户共同参与） | 2d | 2011-01-04 | 2011-01-05 | 28SS+2d | 30d | 0d | finish no earlier than 2011-01-05 | 苏岩; 龚迥 | 32h |

Notes:
- 2: 干系人联系表
- 3: Vision文档
- 4: 概要需求文档
- 5: 需求规格说明书
- 6: 用例图
- 7: 用例规约
- 8: 系统原型
- 12: 更新的需求规格说明书和系统原型
- 15: 4+1View
- 16: 架构原型
- 17: 架构测试报告
- 20: 医院管理和医生管理子系统的详细需求文档
- 21: 医院管理和医生管理子系统的详细设计文档
- 22: 医院管理和医生管理子系统的代码
- 23: 医院管理和医生管理子系统测试报告
- 26: 在线问诊子系统的详细需求文档
- 27: 在线问诊子系统的详细设计文档
- 28: 在线问诊子系统的代码
- 29: 在线问诊子系统的测试报告

| ID | WBS | Task | Duration | Start | Finish | Predecessors | Total slack | Free slack | Constraint | Resources | Work |
| --- | --- | --- | --- | --- | --- | --- | --- | --- | --- | --- | --- |
| 30 | 3.3 | **构造阶段3(R3)** | 11d | 2011-01-06 | 2011-01-20 |  | 9d |  |  |  | 256h |
| 31 | 3.3.1 | 修改R2测试时发现的Bug | 2d | 2011-01-06 | 2011-01-07 | 29 | 30d |  | finish no earlier than 2011-01-07 | 郭学兵; 华天 | 32h |
| 32 | 3.3.2 | 需求分析，重点在在线预约子系统 | 2d | 2011-01-07 | 2011-01-10 | 13 | 21d | 0d | finish no earlier than 2011-01-10 | 江凌俊; 龚迥; 苏岩 | 48h |
| 33 | 3.3.3 | 设计 | 2d | 2011-01-11 | 2011-01-12 | 32 | 21d | 0d | finish no earlier than 2011-01-12 | 郭学兵; 华天; 江凌俊 | 48h |
| 34 | 3.3.4 | 实现 | 6d | 2011-01-13 | 2011-01-20 | 33 | 21d | 2d | finish no earlier than 2011-01-20 | 郭学兵; 华天 | 96h |
| 35 | 3.3.5 | 测试（用户共同参与） | 2d | 2011-01-19 | 2011-01-20 | 34SS+2d | 0d |  | finish no earlier than 2011-01-20 | 苏岩; 龚迥 | 32h |
| 36 | 4 | **移交阶段(1个迭代)** | 21d | 2011-01-21 | 2011-02-18 |  | 0d |  |  |  | 272h |
| 37 | 4.1 | 在用户环境中安装R3 | 3d | 2011-01-21 | 2011-01-25 | 35 | 0d |  | finish no earlier than 2011-01-25 | 江凌俊 | 24h |
| 38 | 4.2 | 用户培训R3 | 3d | 2011-01-26 | 2011-01-28 | 37 | 0d |  | finish no earlier than 2011-01-28 | 苏岩; 龚迥 | 48h |
| 39 | 4.3 | 用户测试和试用R3 | 5d | 2011-01-31 | 2011-02-04 | 38 | 0d |  | finish no earlier than 2011-02-04 | 苏岩; 龚迥 | 80h |
| 40 | 4.4 | 根据用户反馈修改R3，形成R4 | 5d | 2011-02-07 | 2011-02-11 | 39 | 0d |  | finish no earlier than 2011-02-11 | 郭学兵; 华天 | 80h |
| 41 | 4.5 | 在用户环境中安装R4 | 5d | 2011-02-14 | 2011-02-18 | 40 | 0d |  | finish no earlier than 2011-02-18 | 江凌俊 | 40h |

Notes:
- 32: 在线预约子系统的详细需求文档
- 33: 在线预约子系统的详细设计文档
- 34: 在线预约子系统的代码
- 35: 在线预约子系统的测试报告
- 38: 用户培训满意度报告
- 40: R4版本
- 41: 最终提交物（包括源码、文档等）
